# 免费用水版本 8k Nov

Schedule from a web Gantt chart, 2024-11-01 to 2025-01-15.
Saturdays and Sundays are off

## Schedule

| ID | WBS | Task | Duration | Start | Finish | Predecessors | Complete | Status |
| --- | --- | --- | --- | --- | --- | --- | --- | --- |
| 2 | 1 | **11月 8k** | 54d | 2024-11-01 | 2025-01-15 |  | 25% |  |
| 3 | 1.1 | 客户需求冻结 | 5d | 2024-11-01 | 2024-11-07 |  | 100% | done |
| 4 | 1.2 | **软件定版、开发与测试** | 13d | 2024-11-08 | 2024-11-26 |  | 57% |  |
| 5 | 1.2.1 | 软件开发 | 10d | 2024-11-08 | 2024-11-21 |  | 80% |  |
| 6 | 1.2.2 | willfar内部测试 | 1d | 2024-11-22 | 2024-11-22 | 5 |  | waiting |
| 7 | 1.2.3 | inzalo测试 | 3d | 2024-11-22 | 2024-11-26 | 5 |  | waiting |
| 8 | 1.3 | 产线生产 | 21d | 2024-11-01 | 2024-11-29 |  | 40% |  |
| 9 | 1.4 | 物流发货 | 33d | 2024-12-02 | 2025-01-15 | 8 |  | waiting |
| 10 | 1.5 | 南非做STS认证（软件功能修改时需要重新认证） | 10d | 2024-11-27 | 2024-12-10 | 4 |  | waiting |
| 11 | 1.6 | 南非换NRCS | 1d | 2024-12-11 | 2024-12-11 | 10 |  | waiting |
| 12 | 2 | 12月 8k | 1d | 2024-11-01 | 2024-11-01 |  |  |  |
| 13 | 3 | 准备技术附件，准备投产 | 2d | 2024-11-21 | 2024-11-22 |  |  |  |
